# Создание карты города

Schedule from MS Project, 2024-03-01 to 2024-07-24, status date 2024-05-08, costs in ₽, A marks actual dates.
Команда разработчиков из 16 человек занимается созданием карты города на основе собственного модуля отображения. Проект должен быть завершен в течение 6 месяцев. Бюджет проекта: 50 000 рублей.

## Calendars

- Стандартный: Mon-Fri 09:00-13:00, 14:00-18:00; Sat-Sun off. Exceptions (off unless hours are given): 2024-03-08 (Международный женский день), 2024-04-29 to 2024-05-01 (Праздник Весны и Труда), 2024-05-09 to 2024-05-10 (День Победы), 2024-06-12 (День России).

## Resources

| Resource | Group | Rate | Cost per use |
| --- | --- | --- | --- |
| Ведущий программист | Программирование | 10 | 100 |
| Программист#1 | Программирование | 7 | 50 |
| Программист#2 | Программирование | 7 | 50 |
| Программист#3 | Программирование | 7 | 50 |
| Программист#4 | Программирование | 7 | 50 |
| Системный аналитик | Анализ | 20 | 300 |
| Художник-дизайнер | Дизайн | 8.8 | 77 |
| Технический писатель | Документация | 5 | 20 |
| Web-дизайнер | Internet | 7 | 50 |
| 3D аниматор | Дизайн | 8.8 | 77 |
| Мультимедиа- корреспондент | М-медиа | 3 | 20 |
| Наборщик данных#1 | Ввод данных | 2 | 10 |
| Наборщик данных#2 | Ввод данных | 2 | 10 |
| Наборщик данных#3 | Ввод данных | 2 | 10 |
| Наборщик данных#4 | Ввод данных | 2 | 10 |
| Наборщик данных#5 | Ввод данных | 2 | 10 |
| Аренда сервера |  | 2 |  |

## Schedule

| ID | WBS | Task | Type | Duration | Start | Finish | Predecessors | Complete | Remaining | Baseline start | Baseline finish | Baseline duration | Total slack | Free slack | Resources | Work | Actual work | Cost | Baseline cost | Actual cost |
| --- | --- | --- | --- | --- | --- | --- | --- | --- | --- | --- | --- | --- | --- | --- | --- | --- | --- | --- | --- | --- |
| 1 | 1 | Начало проекта | milestone | 0w | 2024-03-01 09:00 A | 2024-03-01 09:00 A |  | 100% |  | 2024-03-01 09:00 | 2024-03-01 09:00 | 0w |  |  |  |  |  |  |  |  |
| 2 | 2 | **Создание интерфейса** |  | 58.73d | 2024-03-01 09:00 A | 2024-05-30 15:51 | 1 | 87% | 7.86d | 2024-03-01 09:00 | 2024-05-30 15:51 | 58.73d | 17.83d |  |  | 560h | 320h | 5,951.6 | 5,894 | 3,697.6 |
| 3 | 2.1 | **Разработка дизайна интерфейса** |  | 30d | 2024-03-01 09:00 A | 2024-04-12 18:00 A |  | 100% |  | 2024-03-01 09:00 | 2024-04-08 13:00 | 25.5d |  |  |  | 320h | 320h | 2,827.6 | 2,770 | 2,827.6 |
| 4 | 2.1.1 | Разработка 2D графических элементов |  | 3w | 2024-03-01 09:00 A | 2024-03-22 18:00 A |  | 100% |  | 2024-03-01 09:00 | 2024-03-22 18:00 | 3w |  |  | Художник-дизайнер | 120h | 120h | 1,087.6 | 1,030 | 1,087.6 |
| 5 | 2.1.2 | Разработка 3D графических элементов |  | 2w | 2024-03-01 09:00 A | 2024-04-01 11:43 A | 4SS | 100% |  | 2024-03-01 09:00 | 2024-03-15 18:00 | 2w |  |  | 3D аниматор | 80h | 80h | 710 | 710 | 710 |
| 6 | 2.1.3 | Создание заставки |  | 2.77w | 2024-03-25 16:12 A | 2024-04-12 18:00 A | 5 | 100% |  | 2024-03-18 14:00 | 2024-04-08 13:00 | 3w |  |  | 3D аниматор | 120h | 120h | 1,030 | 1,030 | 1,030 |
| 7 | 2.2 | Программирование интерфейса |  | 1.2w | 2024-05-22 15:51 | 2024-05-30 15:51 | 3, 12 |  |  | 2024-05-22 15:51 | 2024-05-30 15:51 | 1.2w | 17.83d | 0d | Программист#3; Программист#4; Ведущий программист; Программист#1; Программист#2 | 240h |  | 2,124 | 2,124 |  |
| 8 | 3 | **Построение базы объектов** |  | 96.7d | 2024-03-01 09:00 A | 2024-07-24 15:35 |  | 21% | 76.58d | 2024-03-01 09:00 | 2024-07-04 11:35 | 82.32d | 0d |  | Аренда сервера | 6202.59h | 1045.2h | 15,354 | 15,879.17 | 6,574.41 |
| 9 | 3.1 | Анализ и построение структуры базы объектов |  | 2.4w | 2024-03-01 09:00 A | 2024-03-19 18:00 A |  | 100% |  | 2024-03-01 09:00 | 2024-03-15 18:00 | 2w |  |  | Системный аналитик | 80h | 80h | 1,900 | 1,900 | 1,900 |
| 10 | 3.2 | Программирование средств обработки базы объектов |  | 1.5w | 2024-03-22 17:35 A | 2024-04-03 12:35 A | 9 | 100% |  | 2024-03-25 17:35 | 2024-04-03 11:35 | 1.27w |  |  | Программист#3; Программист#4; Ведущий программист; Программист#1; Программист#2 | 240h | 240h | 2,124 | 2,124 | 2,124 |
| 11 | 3.3 | Наполнение базы объектов |  | 14.85w | 2024-04-03 12:35 A | 2024-07-24 15:35 | 10 |  | 14.85w | 2024-04-03 11:35 | 2024-07-04 11:35 | 12w | 0d |  | Наборщик данных#1; Наборщик данных#2; Наборщик данных#3; Наборщик данных#4; Наборщик данных#5 | 2396h |  | 4,842 | 4,850 | 50 |
| 12 | 4 | **Создание ядра GIS** |  | 52.73d | 2024-03-01 09:00 A | 2024-05-22 15:51 |  | 48% | 27.19d | 2024-03-01 09:00 | 2024-05-22 15:51 | 52.73d | 17.83d | 0d |  | 1880h | 912.2h | 17,271.91 | 17,271.91 | 9,391.92 |
| 13 | 4.1 | Анализ и проектирование ядра |  | 1.02w | 2024-03-01 09:00 A | 2024-03-11 10:00 A |  | 100% |  | 2024-03-01 09:00 | 2024-03-11 10:00 | 1.02w |  |  | Ведущий программист; Системный аналитик; Программист#1; Программист#2; Программист#3; Программист#4 | 240h | 240h | 2,920 | 2,920 | 2,920 |
| 14 | 4.2 | Создание модели ядра |  | 2.02w | 2024-03-11 10:00 A | 2024-03-25 10:56 A | 13 | 100% |  | 2024-03-11 10:00 | 2024-03-25 10:56 | 2.02w |  |  | Ведущий программист; Программист#1; Программист#2; Программист#3; Программист#4 | 400h | 400h | 3,335.75 | 3,335.75 | 3,335.75 |
| 15 | 4.3 | Тестирование модели ядра |  | 0.35w | 2024-03-29 11:05 A | 2024-04-01 18:00 A | 14 | 100% |  | 2024-03-25 10:56 | 2024-03-26 10:56 | 0.2w |  |  | Программист#1; Ведущий программист; Программист#2; Программист#3; Программист#4 | 40h | 40h | 604 | 604 | 604 |
| 16 | 4.4 | Создание рабочей версии ядра |  | 6.16w | 2024-04-02 17:35 A | 2024-05-22 15:51 | 15 | 20% | 4.93w | 2024-04-02 17:35 | 2024-05-22 15:51 | 6.16w | 17.83d |  | Ведущий программист; Программист#1; Программист#2; Программист#3; Программист#4 | 1200h | 232.2h | 9,412.16 | 9,412.16 | 2,052.17 |
| 17 | 5 | Создание мультимедиа - наполнения |  | 6w | 2024-04-15 09:00 A | 2024-06-03 15:00 | 3 |  | 6w | 2024-04-08 14:00 | 2024-05-27 13:00 | 6w | 36.07d | 36.7d | Мультимедиа- корреспондент | 240h |  | 740 | 740 | 20 |
| 18 | 6 | Создание справочной системы |  | 2w | 2024-05-30 15:51 | 2024-06-14 15:51 | 7 |  |  | 2024-05-30 15:51 | 2024-06-14 15:51 | 2w | 27.97d |  | Технический писатель | 80h |  | 420 | 420 |  |
| 19 | 7 | **Создание руководства пользователя** |  | 17d | 2024-05-16 15:51 | 2024-06-10 15:51 | 7FS-10d |  |  | 2024-05-16 15:51 | 2024-06-10 15:51 | 17d | 17.83d |  |  | 160h |  | 1,010 | 1,010 |  |
| 20 | 7.1 | Разработка дизайна руководства |  | 1w | 2024-05-16 15:51 | 2024-05-23 15:51 |  |  |  | 2024-05-16 15:51 | 2024-05-23 15:51 | 1w | 17.83d | 0d | Художник-дизайнер | 40h |  | 390 | 390 |  |
| 21 | 7.2 | Написание руководства пользователя |  | 3w | 2024-05-20 15:51 | 2024-06-10 15:51 | 20SS+2d |  |  | 2024-05-20 15:51 | 2024-06-10 15:51 | 3w | 17.83d | 0d | Технический писатель | 120h |  | 620 | 620 |  |
| 22 | 8 | **Создание web-сайта и поддержка** |  | 21d | 2024-05-20 15:51 | 2024-06-19 15:51 |  |  |  | 2024-05-20 15:51 | 2024-06-19 15:51 | 21d | 17.83d | 0d |  | 248h |  | 2,106 | 2,106 |  |
| 23 | 8.1 | Разработка структуры сайта |  | 1d | 2024-05-20 15:51 | 2024-05-21 15:51 | 21SS |  |  | 2024-05-20 15:51 | 2024-05-21 15:51 | 1d | 17.83d | 0d | Web-дизайнер | 8h |  | 106 | 106 |  |
| 24 | 8.2 | Разработка дизайна сайта |  | 1w | 2024-05-21 15:51 | 2024-05-28 15:51 | 23 |  |  | 2024-05-21 15:51 | 2024-05-28 15:51 | 1w | 17.83d | 0d | 3D аниматор; Web-дизайнер; Художник-дизайнер | 120h |  | 1,110 | 1,110 |  |
| 25 | 8.3 | Наполнение сайта |  | 3w | 2024-05-28 15:51 | 2024-06-19 15:51 | 24 |  |  | 2024-05-28 15:51 | 2024-06-19 15:51 | 3w | 17.83d |  | Web-дизайнер | 120h |  | 890 | 890 |  |
| 26 | 9 | Тестирование сайта |  | 2.43w | 2024-06-11 15:51 | 2024-06-28 16:55 | 22FS-1w |  |  | 2024-06-11 15:51 | 2024-06-28 16:55 | 2.43w | 17.83d | 0d | Ведущий программист; Программист#1; Программист#2; Программист#3; Программист#4 | 480h |  | 3,945.85 | 3,945.85 |  |
| 27 | 10 | Сдача сайта в эксплуатацию | milestone | 0w | 2024-06-28 16:55 | 2024-06-28 16:55 | 26 |  |  | 2024-06-28 16:55 | 2024-06-28 16:55 | 0w | 17.83d |  |  |  |  |  |  |  |

| ID | WBS | Task | Duration | Start | Finish | Complete | Remaining | Baseline start | Baseline finish | Baseline duration | Total slack | Constraint | Resources | Work | Actual work | Cost | Baseline cost | Actual cost |
| --- | --- | --- | --- | --- | --- | --- | --- | --- | --- | --- | --- | --- | --- | --- | --- | --- | --- | --- |
| 28 | 11 | **Совещание** | 78.12d | 2024-03-06 09:00 A | 2024-07-03 10:00 | 56% | 34.72d | 2024-03-06 09:00 | 2024-07-03 10:00 | 78.12d | 15.57d |  |  | 126h | 70h | 1,098 | 1,098 | 610 |
| 29 | 11.1 | Совещание 1 | 1h | 2024-03-06 09:00 A | 2024-03-06 10:00 A | 100% |  | 2024-03-06 09:00 | 2024-03-06 10:00 | 1h |  | start no earlier than 2024-03-06 09:00 | 3D аниматор; Web-дизайнер; Ведущий программист; Мультимедиа- корреспондент; Системный аналитик; Технический писатель; Художник-дизайнер | 7h | 7h | 61 | 61 | 61 |
| 30 | 11.2 | Совещание 2 | 1h | 2024-03-13 09:00 A | 2024-03-13 10:00 A | 100% |  | 2024-03-13 09:00 | 2024-03-13 10:00 | 1h |  | start no earlier than 2024-03-13 09:00 | 3D аниматор; Web-дизайнер; Ведущий программист; Мультимедиа- корреспондент; Системный аналитик; Технический писатель; Художник-дизайнер | 7h | 7h | 61 | 61 | 61 |
| 31 | 11.3 | Совещание 3 | 1h | 2024-03-20 09:00 A | 2024-03-20 10:00 A | 100% |  | 2024-03-20 09:00 | 2024-03-20 10:00 | 1h |  | start no earlier than 2024-03-20 09:00 | 3D аниматор; Web-дизайнер; Ведущий программист; Мультимедиа- корреспондент; Системный аналитик; Технический писатель; Художник-дизайнер | 7h | 7h | 61 | 61 | 61 |
| 32 | 11.4 | Совещание 4 | 1h | 2024-03-27 09:00 A | 2024-03-27 10:00 A | 100% |  | 2024-03-27 09:00 | 2024-03-27 10:00 | 1h |  | start no earlier than 2024-03-27 09:00 | 3D аниматор; Web-дизайнер; Ведущий программист; Мультимедиа- корреспондент; Системный аналитик; Технический писатель; Художник-дизайнер | 7h | 7h | 61 | 61 | 61 |
| 33 | 11.5 | Совещание 5 | 1h | 2024-04-03 09:00 A | 2024-04-03 10:00 A | 100% |  | 2024-04-03 09:00 | 2024-04-03 10:00 | 1h |  | start no earlier than 2024-04-03 09:00 | 3D аниматор; Web-дизайнер; Ведущий программист; Мультимедиа- корреспондент; Системный аналитик; Технический писатель; Художник-дизайнер | 7h | 7h | 61 | 61 | 61 |
| 34 | 11.6 | Совещание 6 | 1h | 2024-04-10 09:00 A | 2024-04-10 10:00 A | 100% |  | 2024-04-10 09:00 | 2024-04-10 10:00 | 1h |  | start no earlier than 2024-04-10 09:00 | 3D аниматор; Web-дизайнер; Ведущий программист; Мультимедиа- корреспондент; Системный аналитик; Технический писатель; Художник-дизайнер | 7h | 7h | 61 | 61 | 61 |
| 35 | 11.7 | Совещание 7 | 1h | 2024-04-17 09:00 A | 2024-04-17 10:00 A | 100% |  | 2024-04-17 09:00 | 2024-04-17 10:00 | 1h |  | start no earlier than 2024-04-17 09:00 | 3D аниматор; Web-дизайнер; Ведущий программист; Мультимедиа- корреспондент; Системный аналитик; Технический писатель; Художник-дизайнер | 7h | 7h | 61 | 61 | 61 |
| 36 | 11.8 | Совещание 8 | 1h | 2024-04-24 09:00 A | 2024-04-24 10:00 A | 100% |  | 2024-04-24 09:00 | 2024-04-24 10:00 | 1h |  | start no earlier than 2024-04-24 09:00 | 3D аниматор; Web-дизайнер; Ведущий программист; Мультимедиа- корреспондент; Системный аналитик; Технический писатель; Художник-дизайнер | 7h | 7h | 61 | 61 | 61 |
| 37 | 11.9 | Совещание 9 | 1h | 2024-05-02 09:00 A | 2024-05-02 10:00 A | 100% |  | 2024-05-02 09:00 | 2024-05-02 10:00 | 1h |  | start no earlier than 2024-05-01 09:00 | 3D аниматор; Web-дизайнер; Ведущий программист; Мультимедиа- корреспондент; Системный аналитик; Технический писатель; Художник-дизайнер | 7h | 7h | 61 | 61 | 61 |
| 38 | 11.10 | Совещание 10 | 1h | 2024-05-08 09:00 A | 2024-05-08 10:00 A | 100% |  | 2024-05-08 09:00 | 2024-05-08 10:00 | 1h |  | start no earlier than 2024-05-08 09:00 | 3D аниматор; Web-дизайнер; Ведущий программист; Мультимедиа- корреспондент; Системный аналитик; Технический писатель; Художник-дизайнер | 7h | 7h | 61 | 61 | 61 |
| 39 | 11.11 | Совещание 11 | 1h | 2024-05-15 09:00 | 2024-05-15 10:00 |  |  | 2024-05-15 09:00 | 2024-05-15 10:00 | 1h | 49.57d | start no earlier than 2024-05-15 09:00 | 3D аниматор; Web-дизайнер; Ведущий программист; Мультимедиа- корреспондент; Системный аналитик; Технический писатель; Художник-дизайнер | 7h |  | 61 | 61 |  |
| 40 | 11.12 | Совещание 12 | 1h | 2024-05-22 09:00 | 2024-05-22 10:00 |  |  | 2024-05-22 09:00 | 2024-05-22 10:00 | 1h | 44.57d | start no earlier than 2024-05-22 09:00 | 3D аниматор; Web-дизайнер; Ведущий программист; Мультимедиа- корреспондент; Системный аналитик; Технический писатель; Художник-дизайнер | 7h |  | 61 | 61 |  |
| 41 | 11.13 | Совещание 13 | 1h | 2024-05-29 09:00 | 2024-05-29 10:00 |  |  | 2024-05-29 09:00 | 2024-05-29 10:00 | 1h | 39.57d | start no earlier than 2024-05-29 09:00 | 3D аниматор; Web-дизайнер; Ведущий программист; Мультимедиа- корреспондент; Системный аналитик; Технический писатель; Художник-дизайнер | 7h |  | 61 | 61 |  |
| 42 | 11.14 | Совещание 14 | 1h | 2024-06-05 09:00 | 2024-06-05 10:00 |  |  | 2024-06-05 09:00 | 2024-06-05 10:00 | 1h | 34.57d | start no earlier than 2024-06-05 09:00 | 3D аниматор; Web-дизайнер; Ведущий программист; Мультимедиа- корреспондент; Системный аналитик; Технический писатель; Художник-дизайнер | 7h |  | 61 | 61 |  |
| 43 | 11.15 | Совещание 15 | 1h | 2024-06-13 09:00 | 2024-06-13 10:00 |  |  | 2024-06-13 09:00 | 2024-06-13 10:00 | 1h | 29.57d | start no earlier than 2024-06-12 09:00 | 3D аниматор; Web-дизайнер; Ведущий программист; Мультимедиа- корреспондент; Системный аналитик; Технический писатель; Художник-дизайнер | 7h |  | 61 | 61 |  |
| 44 | 11.16 | Совещание 16 | 1h | 2024-06-19 09:00 | 2024-06-19 10:00 |  |  | 2024-06-19 09:00 | 2024-06-19 10:00 | 1h | 25.57d | start no earlier than 2024-06-19 09:00 | 3D аниматор; Web-дизайнер; Ведущий программист; Мультимедиа- корреспондент; Системный аналитик; Технический писатель; Художник-дизайнер | 7h |  | 61 | 61 |  |
| 45 | 11.17 | Совещание 17 | 1h | 2024-06-26 09:00 | 2024-06-26 10:00 |  |  | 2024-06-26 09:00 | 2024-06-26 10:00 | 1h | 20.57d | start no earlier than 2024-06-26 09:00 | 3D аниматор; Web-дизайнер; Ведущий программист; Мультимедиа- корреспондент; Системный аналитик; Технический писатель; Художник-дизайнер | 7h |  | 61 | 61 |  |
| 46 | 11.18 | Совещание 18 | 1h | 2024-07-03 09:00 | 2024-07-03 10:00 |  |  | 2024-07-03 09:00 | 2024-07-03 10:00 | 1h | 15.57d | start no earlier than 2024-07-03 09:00 | 3D аниматор; Web-дизайнер; Ведущий программист; Мультимедиа- корреспондент; Системный аналитик; Технический писатель; Художник-дизайнер | 7h |  | 61 | 61 |  |
