# 08

Schedule from MS Project, 2024-04-01 to 2024-07-09, costs in ₽.

## Calendars

- Стандартный: Mon-Fri 09:00-13:00, 14:00-18:00; Sat-Sun off. Exceptions (off unless hours are given): 2024-04-02 to 2024-07-04 09:00-13:00, 14:00-15:00 (Профилактика, recurring), 2024-05-01 (День Весный и Труда), 2024-05-09 (День Победы), 2024-06-12 (День России).

## Resources

| Resource | Group | Rate | Cost per use |
| --- | --- | --- | --- |
| Аналитик |  | 500 | 5000 |
| Ведущий программист | Программисты | 437.5 | 3000 |
| Программист 1 | Программисты | 312.5 | 2000 |
| Программист 2 | Программисты | 312.5 | 2000 |
| Программист 3 | Программисты | 312.5 | 2000 |
| Технический писатель |  | 250 | 1500 |
| Наборщики данных | Технический персонал | 218.75 | 1000 |
| Сервер базы данных | Оборудование | 25000 | 10000 |
| Картриджи для принтера | Расходные материалы | 2500 |  |
| Бумага | Расходные материалы | 200 |  |
| Специалист профилактики |  | 3000 |  |

## Schedule

| ID | WBS | Task | Type | Duration | Start | Finish | Predecessors | Total slack | Free slack | Constraint | Resources | Work | Cost |
| --- | --- | --- | --- | --- | --- | --- | --- | --- | --- | --- | --- | --- | --- |
| 1 | 1 | **Проект 1** |  | 66d | 2024-04-01 09:00 | 2024-07-09 15:00 |  | 0d |  |  |  | 1432h | 580,000 |
| 2 | 1.1 | Начало реализации проекта | milestone | 0d | 2024-04-01 09:00 | 2024-04-01 09:00 |  | 0d |  |  |  |  |  |
| 3 | 1.2 | **Программирование** |  | 45d | 2024-04-02 09:00 | 2024-06-07 17:00 |  | 0d |  |  | Сервер базы данных | 912h | 374,500 |
| 4 | 1.2.1 | Постановка задачи |  | 5d | 2024-04-02 09:00 | 2024-04-09 12:00 | 2FS+1d | 0d |  |  | Аналитик; Ведущий программист | 80h | 45,500 |
| 5 | 1.2.2 | Разработка интерфейса |  | 20d | 2024-04-09 12:00 | 2024-05-17 13:00 | 4 | 0d |  |  | Ведущий программист; Программист 1 | 160h | 65,000 |
| 6 | 1.2.3 | Разработка модулей обработки данных |  | 15d | 2024-05-17 14:00 | 2024-06-07 17:00 | 5 | 0d |  |  | Программист 2; Программист 3 | 240h | 79,000 |
| 7 | 1.2.4 | Разработка базы данных |  | 15d | 2024-04-09 12:00 | 2024-05-02 10:00 | 4 | 10d | 0d |  | Аналитик; Программист 1 | 240h | 104,500 |
| 8 | 1.2.5 | Заполнение базы данных |  | 12d | 2024-05-02 10:00 | 2024-05-21 13:00 | 7 | 10d | 0d |  | Наборщики данных [200%] | 192h | 44,000 |
| 9 | 1.3 | Программирование завершено | milestone | 0d | 2024-06-07 17:00 | 2024-06-07 17:00 | 6, 8 | 0d |  |  |  |  |  |
| 10 | 1.4 | **Тестирование и отладка** |  | 25d | 2024-05-31 17:00 | 2024-07-09 15:00 |  | 0d |  |  |  | 320h | 125,000 |
| 11 | 1.4.1 | Подготовка тестовых наборов данных |  | 10d | 2024-05-31 17:00 | 2024-06-18 11:00 | 9FS-5d | 0d |  |  | Программист 1; Программист 3 | 80h | 29,000 |
| 12 | 1.4.2 | Тестирование и исправление ошибок |  | 15d | 2024-06-18 11:00 | 2024-07-09 15:00 | 11 | 0d |  |  | Ведущий программист; Программист 2 | 240h | 95,000 |
| 13 | 1.5 | Отладка завершена | milestone | 0d | 2024-07-09 15:00 | 2024-07-09 15:00 | 12 | 0d |  |  |  |  |  |
| 14 | 1.6 | **Разработка документации** |  | 25d | 2024-05-17 14:00 | 2024-06-25 11:00 |  | 10d |  |  | Бумага [0.6%]; Картриджи для принтера [1.2%] | 200h | 59,500 |
| 15 | 1.6.1 | Составление программной документации |  | 10d | 2024-05-17 14:00 | 2024-05-31 17:00 | 8SS+10d | 10d | 0d |  | Технический писатель | 80h | 21,500 |
| 16 | 1.6.2 | Составление пользовательской документации |  | 15d | 2024-05-31 17:00 | 2024-06-25 11:00 | 15 | 10d | 0d |  | Технический писатель | 120h | 31,500 |
| 17 | 1.7 | Конец проекта | milestone | 0d | 2024-06-25 11:00 | 2024-06-25 11:00 | 16 | 10d |  |  |  |  |  |
| 18 | 1.8 | **Профилактика** |  | 55.12d | 2024-04-02 09:00 | 2024-06-25 12:00 |  | 0d |  |  |  |  | 21,000 |
| 19 | 1.8.1 | Профилактика 1 | manual | 3h | 2024-04-02 09:00 | 2024-04-02 12:00 |  |  |  | start no earlier than 2024-04-02 09:00 | Специалист профилактики |  | 3,000 |
| 20 | 1.8.2 | Профилактика 2 | manual | 3h | 2024-04-16 09:00 | 2024-04-16 12:00 |  |  |  | start no earlier than 2024-04-16 09:00 | Специалист профилактики |  | 3,000 |
| 21 | 1.8.3 | Профилактика 3 | manual | 3h | 2024-04-30 09:00 | 2024-04-30 12:00 |  |  |  | start no earlier than 2024-04-30 09:00 | Специалист профилактики |  | 3,000 |
| 22 | 1.8.4 | Профилактика 4 | manual | 3h | 2024-05-14 09:00 | 2024-05-14 12:00 |  |  |  | start no earlier than 2024-05-14 09:00 | Специалист профилактики |  | 3,000 |
| 23 | 1.8.5 | Профилактика 5 | manual | 3h | 2024-05-28 09:00 | 2024-05-28 12:00 |  |  |  | start no earlier than 2024-05-28 09:00 | Специалист профилактики |  | 3,000 |
| 24 | 1.8.6 | Профилактика 6 | manual | 3h | 2024-06-11 09:00 | 2024-06-11 12:00 |  |  |  | start no earlier than 2024-06-11 09:00 | Специалист профилактики |  | 3,000 |
| 25 | 1.8.7 | Профилактика 7 | manual | 3h | 2024-06-25 09:00 | 2024-06-25 12:00 |  |  |  | start no earlier than 2024-06-25 09:00 | Специалист профилактики |  | 3,000 |
