# 10

Schedule from MS Project, 2024-04-01 to 2024-07-23, status date 2024-06-01, costs in ₽, A marks actual dates.

## Calendars

- Стандартный: Mon-Fri 09:00-13:00, 14:00-18:00; Sat-Sun off. Exceptions (off unless hours are given): 2024-04-23 to 2024-06-18 09:00-13:00, 14:00-15:00 (Профилактика оборудования, recurring), 2024-05-01 (День Весный и Труда), 2024-05-09 (День Победы), 2024-06-12 (День России).

## Resources

| Resource | Group | Rate | Cost per use |
| --- | --- | --- | --- |
| Аналитик |  | 500 | 5000 |
| Ведущий программист | Программисты | 437.5 | 3000 |
| Программист 1 | Программисты | 312.5 | 2000 |
| Программист 2 | Программисты | 312.5 | 2000 |
| Программист 3 | Программисты | 312.5 | 2000 |
| Технический писатель |  | 250 | 1500 |
| Наборщики данных | Технический персонал | 218.75 | 1000 |
| Сервер базы данных | Оборудование | 25000 | 10000 |
| Картриджи для принтера | Расходные материалы | 2500 |  |
| Бумага | Расходные материалы | 200 |  |
| Специалист профилактики |  | 3000 |  |

## Schedule

| ID | WBS | Task | Type | Duration | Start | Finish | Predecessors | Complete | Remaining | Baseline start | Baseline finish | Baseline duration | Total slack | Free slack | Constraint | Resources | Work | Actual work | Cost | Baseline cost | Actual cost |
| --- | --- | --- | --- | --- | --- | --- | --- | --- | --- | --- | --- | --- | --- | --- | --- | --- | --- | --- | --- | --- | --- |
| 1 | 1 | **Проект 1** |  | 76.34d | 2024-04-01 A | 2024-07-23 |  | 53% | 35.99d | 2024-04-01 | 2024-06-13 | 48.62d | 0d |  |  |  | 1432h | 800h | 601,310.59 | 507,297.5 | 393,205.59 |
| 2 | 1.1 | Начало реализации проекта | milestone | 0d | 2024-04-01 A | 2024-04-01 A |  | 100% |  | 2024-04-01 | 2024-04-01 | 0d |  |  |  |  |  |  |  |  |  |
| 3 | 1.2 | **Программирование** |  | 60.34d | 2024-04-02 A | 2024-07-02 |  | 78% | 13.41d | 2024-04-02 | 2024-05-21 | 32.62d | 0d |  |  | Сервер базы данных [230%] | 912h | 720h | 396,935.59 | 342,437.5 | 354,605.59 |
| 4 | 1.2.1 | Постановка задачи |  | 5d | 2024-04-02 A | 2024-04-08 A | 2FS+1d | 100% |  | 2024-04-02 | 2024-04-08 | 5d |  |  |  | Аналитик; Ведущий программист | 80h | 80h | 45,500 | 45,500 | 45,500 |
| 5 | 1.2.2 | Разработка интерфейса |  | 10d | 2024-04-09 A | 2024-04-22 A | 4 | 100% |  | 2024-04-09 | 2024-04-22 | 10d |  |  |  | Ведущий программист; Программист 1 | 160h | 160h | 65,000 | 65,000 | 65,000 |
| 6 | 1.2.3 | Разработка модулей обработки данных |  | 15d | 2024-05-01 A | 2024-05-24 A | 5 | 100% |  | 2024-04-23 | 2024-05-16 | 15d |  |  |  | Программист 2; Программист 3 | 240h | 240h | 79,000 | 79,000 | 79,000 |
| 7 | 1.2.4 | Разработка базы данных |  | 12d | 2024-04-09 A | 2024-04-25 A | 4 | 100% |  | 2024-04-09 | 2024-04-30 | 15d |  |  |  | Аналитик; Программист 1; Программист 2; Программист 3 | 240h | 240h | 94,437.5 | 94,437.5 | 94,437.5 |
| 8 | 1.2.5 | Заполнение базы данных |  | 12d | 2024-04-26 A | 2024-07-02 | 7 |  | 12d | 2024-05-02 | 2024-05-21 | 12d | 0d |  |  | Наборщики данных [200%] | 192h |  | 44,000 | 22,000 | 2,000 |
| 9 | 1.3 | Программирование завершено | milestone | 0d | 2024-07-02 | 2024-07-02 | 6, 8 |  |  | 2024-05-21 | 2024-05-21 | 0d | 0d |  |  |  |  |  |  |  |  |
| 10 | 1.4 | **Тестирование и отладка** |  | 36.12d | 2024-05-30 A | 2024-07-23 |  |  | 36.12d | 2024-05-14 | 2024-06-13 | 20d | 0d |  |  |  | 320h |  | 132,875 | 125,000 | 4,000 |
| 11 | 1.4.1 | Подготовка тестовых наборов данных |  | 5d | 2024-05-30 A | 2024-07-02 | 9FS-5d |  | 5d | 2024-05-14 | 2024-05-21 | 5d | 0d |  |  | Программист 1; Программист 3 | 80h |  | 29,000 | 29,000 | 4,000 |
| 12 | 1.4.2 | Тестирование и исправление ошибок |  | 15d | 2024-07-02 | 2024-07-23 | 11 |  |  | 2024-05-21 | 2024-06-13 | 15d | 0d |  |  | Ведущий программист; Программист 2 | 240h |  | 102,875 | 95,000 |  |
| 13 | 1.5 | Отладка завершена | milestone | 0d | 2024-07-23 | 2024-07-23 | 12 |  |  | 2024-06-13 | 2024-06-13 | 0d | 0d |  |  |  |  |  |  |  |  |
| 14 | 1.6 | **Разработка документации** |  | 25d | 2024-05-14 A | 2024-06-20 |  | 40% | 15d | 2024-05-17 | 2024-06-03 | 11d | 22.72d |  |  | Бумага [0.6%]; Картриджи для принтера [1.2%] | 200h | 80h | 59,500 | 27,860 | 25,600 |
| 15 | 1.6.1 | Составление программной документации |  | 10d | 2024-05-14 A | 2024-05-28 A | 8SS+10d | 100% |  | 2024-05-17 | 2024-05-31 | 10d |  |  |  | Технический писатель | 80h | 80h | 21,500 | 21,500 | 21,500 |
| 16 | 1.6.2 | Составление пользовательской документации |  | 15d | 2024-05-28 A | 2024-06-20 | 15 |  | 15d | 2024-05-31 | 2024-06-03 | 1d | 22.72d |  |  | Технический писатель | 120h |  | 31,500 | 3,500 | 1,500 |
| 17 | 1.7 | Конец проекта | milestone | 0d | 2024-05-29 A | 2024-05-29 A | 16 | 100% |  | 2024-06-03 | 2024-06-03 | 0d |  |  |  |  |  |  |  |  |  |
| 18 | 1.8 | **Профилактика оборудования** |  | 27.25d | 2024-04-23 A | 2024-06-04 |  | 75% | 6.81d | 2024-04-23 | 2024-06-04 | 27.25d | 33.09d | 16.98d |  |  |  |  | 12,000 | 12,000 | 9,000 |
| 19 | 1.8.1 | Профилактика оборудования 1 |  | 3h | 2024-04-23 A | 2024-04-23 A |  | 100% |  | 2024-04-23 | 2024-04-23 | 3h |  |  | start no earlier than 2024-04-23 | Специалист профилактики |  |  | 3,000 | 3,000 | 3,000 |
| 20 | 1.8.2 | Профилактика оборудования 2 |  | 3h | 2024-05-07 A | 2024-05-07 A |  | 100% |  | 2024-05-07 | 2024-05-07 | 3h |  |  | start no earlier than 2024-05-07 | Специалист профилактики |  |  | 3,000 | 3,000 | 3,000 |
| 21 | 1.8.3 | Профилактика оборудования 3 |  | 3h | 2024-05-21 A | 2024-05-21 A |  | 100% |  | 2024-05-21 | 2024-05-21 | 3h |  |  | start no earlier than 2024-05-21 | Специалист профилактики |  |  | 3,000 | 3,000 | 3,000 |
| 22 | 1.8.4 | Профилактика оборудования 4 |  | 3h | 2024-06-04 | 2024-06-04 |  |  |  | 2024-06-04 | 2024-06-04 | 3h | 33.09d | 16.98d | start no earlier than 2024-06-04 | Специалист профилактики |  |  | 3,000 | 3,000 |  |
